# NutriLens Project Schedule

Schedule from MS Project, 2026-03-02 to 2026-10-29, costs in $.
FAST-NUCES Karachi

## Calendars

- Standard: Mon-Fri 08:00-12:00, 13:00-17:00; Sat-Sun off. Exceptions (off unless hours are given): 2026-03-21 to 2026-03-22 (Eid-ul-Fitr), 2026-03-23 (Pakistan Day), 2026-05-01 (Labour Day), 2026-05-27 to 2026-05-29 (Eid-ul-Azha), 2026-06-24 to 2026-06-25 (Ashura), 2026-08-14 (Independence Day), 2026-08-25 (Eid Milad-un-Nabi).

## Resources

| Resource | Rate |
| --- | --- |
| Project Manager (PM) | 8 |
| ML Engineer | 10 |
| Backend Developer | 8 |
| Flutter Developer | 8 |
| QA Engineer | 5 |
| UI/UX Designer | 6 |
| DevOps Engineer | 7 |
| Project Manager |  |
| PM |  |

## Schedule

| ID | WBS | Task | Duration | Start | Finish | Predecessors | Total slack | Resources | Work | Cost |
| --- | --- | --- | --- | --- | --- | --- | --- | --- | --- | --- |
| 1 | 1 | **INITIATION & PLANNING PHASE** | 38d | 2026-03-02 | 2026-04-23 |  |  |  | 296h | 648 |
| 2 | 1.1 | **Project Charter & Business Case Finalization** | 6d | 2026-03-02 | 2026-03-09 |  |  |  | 48h |  |
| 3 | 1.1.1 | Review NutriLens problem statement and AI opportunity | 1d | 2026-03-02 | 2026-03-02 |  | 0d | Project Manager | 8h |  |
| 4 | 1.1.2 | Define initial project scope | 1d | 2026-03-03 | 2026-03-03 | 3 | 0d | Project Manager | 8h |  |
| 5 | 1.1.3 | Identify primary stakeholders | 1d | 2026-03-04 | 2026-03-04 | 4 | 0d | Project Manager | 8h |  |
| 6 | 1.1.4 | Secure initial management approval for planning phase | 1d | 2026-03-05 | 2026-03-05 | 5 | 0d | Project Manager | 8h |  |
| 7 | 1.1.5 | Establish project environment (Jira, GitHub, Drive, Slack) | 2d | 2026-03-06 | 2026-03-09 | 6 | 0d | Project Manager | 16h |  |
| 8 | 1.2 | **Requirements Gathering & Analysis** | 12d | 2026-03-10 | 2026-03-26 |  | 0d |  | 88h | 216 |
| 9 | 1.2.1 | Plan requirement collection sessions | 1d | 2026-03-10 | 2026-03-10 | 7 | 0d | Project Manager | 8h |  |
| 10 | 1.2.2 | Document functional requirements | 2d | 2026-03-11 | 2026-03-12 | 9 | 0d | Project Manager | 16h |  |
| 11 | 1.2.3 | Document non-functional requirements | 1d | 2026-03-13 | 2026-03-13 | 10 | 0d | Project Manager | 8h |  |
| 12 | 1.2.4 | Conduct user surveys to validate pain points | 3d | 2026-03-16 | 2026-03-18 | 11 | 0d | Project Manager | 24h |  |
| 13 | 1.2.5 | Document South-Asian cuisine gap and workaround plan | 2d | 2026-03-19 | 2026-03-20 | 12 | 0d | ML Engineer | 16h | 160 |
| 14 | 1.2.6 | Prioritize MVP features vs post-MVP | 2d | 2026-03-24 | 2026-03-25 | 13 | 0d | Project Manager [50%] | 8h |  |
| 15 | 1.2.7 | Review and baseline Requirement Specification Document | 1d | 2026-03-26 | 2026-03-26 | 14 | 0d | DevOps Engineer | 8h | 56 |
| 16 | 1.3 | **Feasibility Analysis Finalization** | 9d | 2026-03-27 | 2026-04-08 |  |  |  | 72h | 160 |
| 17 | 1.3.1 | Finalize Technical Feasibility | 2d | 2026-03-27 | 2026-03-30 | 15 | 0d | ML Engineer | 16h | 160 |
| 18 | 1.3.2 | Finalize Operational Feasibility | 4d | 2026-03-31 | 2026-04-03 | 17 | 0d | Project Manager | 32h |  |
| 19 | 1.3.3 | Finalize Economic Feasibility | 1d | 2026-04-06 | 2026-04-06 | 18 | 0d | Project Manager | 8h |  |
| 20 | 1.3.4 | Finalize Schedule Feasibility | 1d | 2026-04-07 | 2026-04-07 | 19 | 0d | Project Manager | 8h |  |
| 21 | 1.3.5 | Document Critical Success Factors | 1d | 2026-04-08 | 2026-04-08 | 20 | 0d | Project Manager | 8h |  |
| 22 | 1.4 | **Technology Stack & Architecture Selection** | 5d | 2026-04-09 | 2026-04-15 |  |  |  | 40h | 272 |
| 23 | 1.4.1 | Confirm tech stack (Flutter, Flask, Firebase, MobileNetV2) | 1d | 2026-04-09 | 2026-04-09 | 21 | 0d | ML Engineer | 8h | 80 |
| 24 | 1.4.2 | Define system architecture | 2d | 2026-04-10 | 2026-04-13 | 23 | 0d | Backend Developer | 16h | 128 |
| 25 | 1.4.3 | Select Agile Scrum process model | 1d | 2026-04-14 | 2026-04-14 | 24 | 0d | Project Manager | 8h |  |
| 26 | 1.4.4 | Conduct architecture review meeting | 1d | 2026-04-15 | 2026-04-15 | 25 | 0d | Backend Developer | 8h | 64 |

| ID | WBS | Task | Type | Duration | Start | Finish | Predecessors | Total slack | Resources | Work | Cost |
| --- | --- | --- | --- | --- | --- | --- | --- | --- | --- | --- | --- |
| 27 | 1.5 | **Project Plan Finalization** |  | 6d | 2026-04-16 | 2026-04-23 |  |  |  | 48h |  |
| 28 | 1.5.1 | Finalize Work Breakdown Structure (WBS) |  | 1d | 2026-04-16 | 2026-04-16 | 26 | 0d | Project Manager | 8h |  |
| 29 | 1.5.2 | Finalize time estimates and Scrum sprint schedule |  | 1d | 2026-04-17 | 2026-04-17 | 28 | 0d | Project Manager | 8h |  |
| 30 | 1.5.3 | Finalize resource sheet, roles, and budget |  | 2d | 2026-04-20 | 2026-04-21 | 29 | 0d | Project Manager | 16h |  |
| 31 | 1.5.4 | Finalize Risk Register |  | 1d | 2026-04-22 | 2026-04-22 | 30 | 0d | Project Manager | 8h |  |
| 32 | 1.5.5 | Get Project Plan signed off |  | 1d | 2026-04-23 | 2026-04-23 | 31 | 0d | Project Manager | 8h |  |
| 33 | 1.5.6 | Planning Phase Complete | milestone | 0d | 2026-04-23 | 2026-04-23 | 32 | 0d |  |  |  |
| 34 | 2 | **DESIGN PHASE** |  | 49d | 2026-03-02 | 2026-05-11 |  | 0d |  | 392h | 2,816 |
| 35 | 2.1 | **System Architecture & API Design** |  | 11d | 2026-03-02 | 2026-03-16 |  | 0d |  | 88h | 736 |
| 36 | 2.1.1 | Design system context diagram |  | 2d | 2026-03-02 | 2026-03-03 |  | 0d | Backend Developer | 16h | 128 |
| 37 | 2.1.2 | Design high-level component diagram |  | 2d | 2026-03-04 | 2026-03-05 | 36 | 0d | Backend Developer | 16h | 128 |
| 38 | 2.1.3 | Design Flask REST API endpoint structure |  | 4d | 2026-03-06 | 2026-03-11 | 37 | 0d | Backend Developer | 32h | 256 |
| 39 | 2.1.4 | Define Gemini Flash 2.0 integration approach |  | 2d | 2026-03-12 | 2026-03-13 | 38 | 0d | ML Engineer | 16h | 160 |
| 40 | 2.1.5 | Define security architecture |  | 1d | 2026-03-16 | 2026-03-16 | 39 | 0d | Backend Developer | 8h | 64 |
| 41 | 2.2 | **Database & Data Model Design** |  | 9d | 2026-03-17 | 2026-03-30 |  | 0d |  | 72h | 544 |
| 42 | 2.2.1 | Design Firebase Firestore collection schema |  | 2d | 2026-03-17 | 2026-03-18 | 40 | 0d | Backend Developer | 16h | 128 |
| 43 | 2.2.2 | Design meal database schema |  | 3d | 2026-03-19 | 2026-03-24 | 42 | 0d | Backend Developer | 24h | 192 |
| 44 | 2.2.3 | Define TDEE and macro calculation logic |  | 2d | 2026-03-25 | 2026-03-26 | 43 | 0d | ML Engineer | 16h | 160 |
| 45 | 2.2.4 | Define Firestore indexing and security rules |  | 1d | 2026-03-27 | 2026-03-27 | 44 | 0d | Backend Developer | 8h | 64 |
| 46 | 2.2.5 | Review database design with nutrition expert |  | 1d | 2026-03-30 | 2026-03-30 | 45 | 0d | PM | 8h |  |
| 47 | 2.3 | **UI/UX Design** |  | 22d | 2026-03-31 | 2026-04-29 |  | 0d |  | 176h | 1,056 |
| 48 | 2.3.1 | Design wireframes for Onboarding Flow |  | 3d | 2026-03-31 | 2026-04-02 | 46 | 0d | UI/UX Designer | 24h | 144 |
| 49 | 2.3.2 | Design wireframes for Camera and Snap-to-Log screen |  | 2d | 2026-04-03 | 2026-04-06 | 48 | 0d | UI/UX Designer | 16h | 96 |
| 50 | 2.3.3 | Design wireframes for Macro Dashboard |  | 2d | 2026-04-07 | 2026-04-08 | 49 | 0d | UI/UX Designer | 16h | 96 |
| 51 | 2.3.4 | Design wireframes for AI Meal Planner screen |  | 2d | 2026-04-09 | 2026-04-10 | 50 | 0d | UI/UX Designer | 16h | 96 |
| 52 | 2.3.5 | Design wireframes for Meal Log History |  | 2d | 2026-04-13 | 2026-04-14 | 51 | 0d | UI/UX Designer | 16h | 96 |
| 53 | 2.3.6 | Design wireframes for Weekly Streak Tracker UI |  | 4d | 2026-04-15 | 2026-04-20 | 52 | 0d | UI/UX Designer | 32h | 192 |
| 54 | 2.3.7 | Design wireframes for Profile Management screen |  | 1d | 2026-04-21 | 2026-04-21 | 53 | 0d | UI/UX Designer | 8h | 48 |
| 55 | 2.3.8 | Create high-fidelity mockups and define style guide |  | 4d | 2026-04-22 | 2026-04-27 | 54 | 0d | UI/UX Designer | 32h | 192 |
| 56 | 2.3.9 | Conduct usability review and revise designs |  | 2d | 2026-04-28 | 2026-04-29 | 55 | 0d | UI/UX Designer | 16h | 96 |

| ID | WBS | Task | Type | Duration | Start | Finish | Predecessors | Total slack | Resources | Work | Cost |
| --- | --- | --- | --- | --- | --- | --- | --- | --- | --- | --- | --- |
| 57 | 2.4 | **ML Model Architecture Design** |  | 7d | 2026-04-30 | 2026-05-11 |  | 0d |  | 56h | 480 |
| 58 | 2.4.1 | Confirm MobileNetV2 transfer learning approach |  | 2d | 2026-04-30 | 2026-05-04 | 56 | 0d | ML Engineer | 16h | 160 |
| 59 | 2.4.2 | Define model input/output spec |  | 1d | 2026-05-05 | 2026-05-05 | 58 | 0d | ML Engineer | 8h | 80 |
| 60 | 2.4.3 | Plan TFLite conversion and quantization strategy |  | 2d | 2026-05-06 | 2026-05-07 | 59 | 0d | ML Engineer | 16h | 160 |
| 61 | 2.4.4 | Define model evaluation criteria |  | 1d | 2026-05-08 | 2026-05-08 | 60 | 0d | ML Engineer | 8h | 80 |
| 62 | 2.4.5 | Design freeze and approval |  | 1d | 2026-05-11 | 2026-05-11 | 61 | 0d | Project Manager | 8h |  |
| 63 | 2.4.6 | Design Approved | milestone | 0d | 2026-05-11 | 2026-05-11 | 62 | 0d |  |  |  |
| 64 | 3 | **ML DEVELOPMENT PHASE** |  | 35d | 2026-04-24 | 2026-06-17 | 1 | 0d |  | 280h | 2,800 |
| 65 | 3.1 | **Data Preparation** |  | 8d | 2026-04-24 | 2026-05-06 |  | 0d |  | 64h | 640 |
| 66 | 3.1.1 | Download and extract Food-101 dataset |  | 1d | 2026-04-24 | 2026-04-24 |  | 0d | ML Engineer | 8h | 80 |
| 67 | 3.1.2 | Perform data cleaning |  | 3d | 2026-04-27 | 2026-04-29 | 66 | 0d | ML Engineer | 24h | 240 |
| 68 | 3.1.3 | Apply data augmentation |  | 2d | 2026-04-30 | 2026-05-04 | 67 | 0d | ML Engineer | 16h | 160 |
| 69 | 3.1.4 | Split dataset into train/validation/test sets |  | 1d | 2026-05-05 | 2026-05-05 | 68 | 0d | ML Engineer | 8h | 80 |
| 70 | 3.1.5 | Normalize and preprocess images |  | 1d | 2026-05-06 | 2026-05-06 | 69 | 0d | ML Engineer | 8h | 80 |
| 71 | 3.2 | **Model Training & Fine-Tuning** |  | 18d | 2026-05-07 | 2026-06-04 |  | 0d |  | 144h | 1,440 |
| 72 | 3.2.1 | Load pre-trained MobileNetV2 and configure top layers |  | 2d | 2026-05-07 | 2026-05-08 | 70 | 0d | ML Engineer | 16h | 160 |
| 73 | 3.2.2 | Train classification head (10 epochs) |  | 5d | 2026-05-11 | 2026-05-15 | 72 | 0d | ML Engineer | 40h | 400 |
| 74 | 3.2.3 | Fine-tune top MobileNetV2 layers |  | 5d | 2026-05-18 | 2026-05-22 | 73 | 0d | ML Engineer | 40h | 400 |
| 75 | 3.2.4 | Evaluate model on validation set |  | 2d | 2026-05-25 | 2026-05-26 | 74 | 0d | ML Engineer | 16h | 160 |
| 76 | 3.2.5 | Tune hyperparameters to hit 75% Top-1 accuracy |  | 3d | 2026-06-01 | 2026-06-03 | 75 | 0d | ML Engineer | 24h | 240 |
| 77 | 3.2.6 | Evaluate final model on held-out test set |  | 1d | 2026-06-04 | 2026-06-04 | 76 | 0d | ML Engineer | 8h | 80 |
| 78 | 3.3 | **Model Export & Integration** |  | 9d | 2026-06-05 | 2026-06-17 |  | 0d |  | 72h | 720 |
| 79 | 3.3.1 | Convert trained Keras model to TFLite |  | 1d | 2026-06-05 | 2026-06-05 | 77 | 0d | ML Engineer | 8h | 80 |
| 80 | 3.3.2 | Apply post-training quantization (int8) |  | 2d | 2026-06-08 | 2026-06-09 | 79 | 0d | ML Engineer | 16h | 160 |
| 81 | 3.3.3 | Validate TFLite model accuracy |  | 2d | 2026-06-10 | 2026-06-11 | 80 | 0d | ML Engineer | 16h | 160 |
| 82 | 3.3.4 | Test on-device inference time on 3 Android tiers |  | 3d | 2026-06-12 | 2026-06-16 | 81 | 0d | ML Engineer | 24h | 240 |
| 83 | 3.3.5 | Package TFLite model + label map for Flutter |  | 1d | 2026-06-17 | 2026-06-17 | 82 | 0d | ML Engineer | 8h | 80 |
| 84 | 3.3.6 | ML Model Trained & Validated | milestone | 0d | 2026-06-17 | 2026-06-17 | 83 | 0d |  |  |  |

| ID | WBS | Task | Duration | Start | Finish | Predecessors | Total slack | Resources | Work | Cost |
| --- | --- | --- | --- | --- | --- | --- | --- | --- | --- | --- |
| 85 | 4 | **BACKEND DEVELOPMENT PHASE** | 68d | 2026-05-12 | 2026-08-21 | 34 | 0d |  | 544h | 4,232 |
| 86 | 4.1 | **Environment Setup & Core API** | 10d | 2026-05-12 | 2026-05-25 |  | 0d |  | 80h | 624 |
| 87 | 4.1.1 | Setup Python venv, install Flask and dependencies | 1d | 2026-05-12 | 2026-05-12 |  | 0d | Backend Developer | 8h | 64 |
| 88 | 4.1.2 | Configure Firebase Admin SDK and Firestore connection | 2d | 2026-05-13 | 2026-05-14 | 87 | 0d | Backend Developer | 16h | 128 |
| 89 | 4.1.3 | Implement JWT-based authentication middleware | 3d | 2026-05-15 | 2026-05-19 | 88 | 0d | Backend Developer | 24h | 192 |
| 90 | 4.1.4 | Create base API structure with error handling and logging | 2d | 2026-05-20 | 2026-05-21 | 89 | 0d | Backend Developer | 16h | 128 |
| 91 | 4.1.5 | Setup GitHub repo, branching, and CI/CD pipeline | 2d | 2026-05-22 | 2026-05-25 | 90 | 0d | DevOps Engineer | 16h | 112 |
| 92 | 4.2 | **Food Classification API** | 10d | 2026-05-26 | 2026-06-11 |  | 0d |  | 80h | 592 |
| 93 | 4.2.1 | Develop classify endpoint | 3d | 2026-05-26 | 2026-06-02 | 91 | 0d | Backend Developer | 24h | 192 |
| 94 | 4.2.2 | Integrate TFLite model serving in Flask | 3d | 2026-06-03 | 2026-06-05 | 93 | 0d | Backend Developer | 24h | 192 |
| 95 | 4.2.3 | Implement confidence score filtering | 2d | 2026-06-08 | 2026-06-09 | 94 | 0d | Backend Developer | 16h | 128 |
| 96 | 4.2.4 | Write unit tests for classification endpoint | 2d | 2026-06-10 | 2026-06-11 | 95 | 0d | QA Engineer | 16h | 80 |
| 97 | 4.3 | **Gemini Integration - Portion Estimation** | 9d | 2026-06-12 | 2026-06-26 |  | 0d |  | 72h | 592 |
| 98 | 4.3.1 | Integrate Google Gemini Flash 2.0 API | 3d | 2026-06-12 | 2026-06-16 | 96 | 0d | Backend Developer | 24h | 192 |
| 99 | 4.3.2 | Develop estimate-portion endpoint | 3d | 2026-06-17 | 2026-06-19 | 98 | 0d | Backend Developer | 24h | 192 |
| 100 | 4.3.3 | Implement graceful fallback for Gemini timeout | 2d | 2026-06-22 | 2026-06-23 | 99 | 0d | Backend Developer | 16h | 128 |
| 101 | 4.3.4 | Validate portion estimation with nutrition expert | 1d | 2026-06-26 | 2026-06-26 | 100 | 0d | ML Engineer | 8h | 80 |
| 102 | 4.4 | **A-Star Meal Planner Module** | 17d | 2026-06-29 | 2026-07-21 |  | 0d |  | 136h | 1,120 |
| 103 | 4.4.1 | Populate Firestore meal database (200-300 meals) | 5d | 2026-06-29 | 2026-07-03 | 101 | 0d | Backend Developer | 40h | 320 |
| 104 | 4.4.2 | Implement A-Star search algorithm | 5d | 2026-07-06 | 2026-07-10 | 103 | 0d | ML Engineer | 40h | 400 |
| 105 | 4.4.3 | Develop meal-plan endpoint | 3d | 2026-07-13 | 2026-07-15 | 104 | 0d | Backend Developer | 24h | 192 |
| 106 | 4.4.4 | Implement dietary filter logic | 2d | 2026-07-16 | 2026-07-17 | 105 | 0d | Backend Developer | 16h | 128 |
| 107 | 4.4.5 | Test meal planner with edge cases | 2d | 2026-07-20 | 2026-07-21 | 106 | 0d | QA Engineer | 16h | 80 |
| 108 | 4.5 | **User & Macro Management APIs** | 12d | 2026-07-22 | 2026-08-06 |  | 0d |  | 96h | 800 |
| 109 | 4.5.1 | Develop onboarding endpoint | 2d | 2026-07-22 | 2026-07-23 | 107 | 0d | Backend Developer | 16h | 128 |
| 110 | 4.5.2 | Implement Mifflin-St Jeor TDEE calculation | 2d | 2026-07-24 | 2026-07-27 | 109 | 0d | ML Engineer | 16h | 160 |
| 111 | 4.5.3 | Develop log-meal endpoint | 2d | 2026-07-28 | 2026-07-29 | 110 | 0d | Backend Developer | 16h | 128 |
| 112 | 4.5.4 | Develop macro-summary endpoint | 2d | 2026-07-30 | 2026-07-31 | 111 | 0d | Backend Developer | 16h | 128 |
| 113 | 4.5.5 | Develop streak endpoint | 2d | 2026-08-03 | 2026-08-04 | 112 | 0d | Backend Developer | 16h | 128 |
| 114 | 4.5.6 | Develop history endpoint (paginated) | 2d | 2026-08-05 | 2026-08-06 | 113 | 0d | Backend Developer | 16h | 128 |

| ID | WBS | Task | Type | Duration | Start | Finish | Predecessors | Total slack | Resources | Work | Cost |
| --- | --- | --- | --- | --- | --- | --- | --- | --- | --- | --- | --- |
| 115 | 4.6 | **Backend Testing & Deployment** |  | 10d | 2026-08-07 | 2026-08-21 |  | 0d |  | 80h | 504 |
| 116 | 4.6.1 | Write integration tests for all API endpoints |  | 3d | 2026-08-07 | 2026-08-11 | 114 | 0d | QA Engineer | 24h | 120 |
| 117 | 4.6.2 | Perform load testing (50 concurrent users) |  | 2d | 2026-08-12 | 2026-08-13 | 116 | 0d | QA Engineer | 16h | 80 |
| 118 | 4.6.3 | Generate Swagger/OpenAPI documentation |  | 2d | 2026-08-17 | 2026-08-18 | 117 | 0d | Backend Developer | 16h | 128 |
| 119 | 4.6.4 | Deploy backend to Railway/Render |  | 2d | 2026-08-19 | 2026-08-20 | 118 | 0d | DevOps Engineer | 16h | 112 |
| 120 | 4.6.5 | Configure Firebase Firestore security rules for production |  | 1d | 2026-08-21 | 2026-08-21 | 119 | 0d | Backend Developer | 8h | 64 |
| 121 | 4.6.6 | Backend API Live | milestone | 0d | 2026-08-21 | 2026-08-21 | 120 | 0d |  |  |  |
| 122 | 5 | **FRONTEND FLUTTER DEVELOPMENT PHASE** |  | 27d | 2026-06-18 | 2026-07-28 | 64 | 0d |  | 216h | 1,712 |
| 123 | 5.1 | **Project Setup & Core Configuration** |  | 3d | 2026-06-18 | 2026-06-22 |  |  |  | 24h | 176 |
| 124 | 5.1.1 | Create Flutter project and configure Firebase |  | 0.5d | 2026-06-18 | 2026-06-18 |  | 0d | Flutter Developer | 4h | 32 |
| 125 | 5.1.2 | Setup state management, routing, and folder structure |  | 0.5d | 2026-06-18 | 2026-06-18 | 124 | 0d | Flutter Developer | 4h | 32 |
| 126 | 5.1.3 | Implement Firebase Auth (Email/Password + Google Sign-In) |  | 0.5d | 2026-06-19 | 2026-06-19 | 125 | 0d | Flutter Developer | 4h | 32 |
| 127 | 5.1.4 | Configure camera plugin and image picker |  | 0.5d | 2026-06-19 | 2026-06-19 | 126 | 0d | Flutter Developer | 4h | 32 |
| 128 | 5.1.5 | Define global theme, colors, typography, reusable widgets |  | 1d | 2026-06-22 | 2026-06-22 | 127 | 0d | UI/UX Designer | 8h | 48 |
| 129 | 5.2 | **Onboarding Flow (5 Steps)** |  | 2d | 2026-06-23 | 2026-06-26 |  |  |  | 16h | 128 |
| 130 | 5.2.1 | Build Step 1 - Name and Gender input screen |  | 0.3d | 2026-06-23 | 2026-06-23 | 128 | 0d | Flutter Developer | 2.4h | 19.2 |
| 131 | 5.2.2 | Build Step 2 - Age and Weight input screen |  | 0.3d | 2026-06-23 | 2026-06-23 | 130 | 0d | Flutter Developer | 2.4h | 19.2 |
| 132 | 5.2.3 | Build Step 3 - Height input screen |  | 0.3d | 2026-06-23 | 2026-06-23 | 131 | 0d | Flutter Developer | 2.4h | 19.2 |
| 133 | 5.2.4 | Build Step 4 - Fitness Goal selection |  | 0.3d | 2026-06-23 | 2026-06-26 | 132 | 0d | Flutter Developer | 2.4h | 19.2 |
| 134 | 5.2.5 | Build Step 5 - Dietary Preference selection |  | 0.3d | 2026-06-26 | 2026-06-26 | 133 | 0d | Flutter Developer | 2.4h | 19.2 |
| 135 | 5.2.6 | Implement onboarding completion and save to Firestore |  | 0.5d | 2026-06-26 | 2026-06-26 | 134 | 0d | Flutter Developer | 4h | 32 |
| 136 | 5.3 | **Camera & Snap-to-Log Screen** |  | 6d | 2026-06-29 | 2026-07-06 |  | 0d |  | 48h | 384 |
| 137 | 5.3.1 | Build camera capture screen with real-time preview |  | 1d | 2026-06-29 | 2026-06-29 | 135 | 0d | Flutter Developer | 8h | 64 |
| 138 | 5.3.2 | Integrate classify API call on image capture |  | 1d | 2026-06-30 | 2026-06-30 | 137 | 0d | Flutter Developer | 8h | 64 |
| 139 | 5.3.3 | Display top-3 classification results with confidence scores |  | 1d | 2026-07-01 | 2026-07-01 | 138 | 0d | Flutter Developer | 8h | 64 |
| 140 | 5.3.4 | Implement food selection confirmation and manual override |  | 1d | 2026-07-02 | 2026-07-02 | 139 | 0d | Flutter Developer | 8h | 64 |
| 141 | 5.3.5 | Trigger estimate-portion call after food selection |  | 1d | 2026-07-03 | 2026-07-03 | 140 | 0d | Flutter Developer | 8h | 64 |
| 142 | 5.3.6 | Display estimated macros and confirm log to Firestore |  | 1d | 2026-07-06 | 2026-07-06 | 141 | 0d | Flutter Developer | 8h | 64 |

| ID | WBS | Task | Type | Duration | Start | Finish | Predecessors | Total slack | Resources | Work | Cost |
| --- | --- | --- | --- | --- | --- | --- | --- | --- | --- | --- | --- |
| 143 | 5.4 | **Macro Dashboard** |  | 3d | 2026-07-07 | 2026-07-09 |  |  |  | 24h | 192 |
| 144 | 5.4.1 | Build real-time macro dashboard with progress bars |  | 1d | 2026-07-07 | 2026-07-07 | 142 | 0d | Flutter Developer | 8h | 64 |
| 145 | 5.4.2 | Implement live update after each meal log |  | 1d | 2026-07-08 | 2026-07-08 | 144 | 0d | Flutter Developer | 8h | 64 |
| 146 | 5.4.3 | Display daily goal vs consumed with percentage indicators |  | 0.5d | 2026-07-09 | 2026-07-09 | 145 | 0d | Flutter Developer | 4h | 32 |
| 147 | 5.4.4 | Add quick-access button to camera and meal planner |  | 0.5d | 2026-07-09 | 2026-07-09 | 146 | 0d | Flutter Developer | 4h | 32 |
| 148 | 5.5 | **AI Meal Planner Screen** |  | 4d | 2026-07-10 | 2026-07-15 |  | 0d |  | 32h | 256 |
| 149 | 5.5.1 | Build meal planner UI with 3 recommended meals |  | 1d | 2026-07-10 | 2026-07-10 | 147 | 0d | Flutter Developer | 8h | 64 |
| 150 | 5.5.2 | Implement dietary filter toggle |  | 1d | 2026-07-13 | 2026-07-13 | 149 | 0d | Flutter Developer | 8h | 64 |
| 151 | 5.5.3 | Show macro breakdown for each meal card |  | 1d | 2026-07-14 | 2026-07-14 | 150 | 0d | Flutter Developer | 8h | 64 |
| 152 | 5.5.4 | Implement log recommended meal from planner screen |  | 1d | 2026-07-15 | 2026-07-15 | 151 | 0d | Flutter Developer | 8h | 64 |
| 153 | 5.6 | **Meal Log History Screen** |  | 3d | 2026-07-16 | 2026-07-20 |  | 0d |  | 24h | 192 |
| 154 | 5.6.1 | Build paginated meal log history (20 items per page) |  | 1d | 2026-07-16 | 2026-07-16 | 152 | 0d | Flutter Developer | 8h | 64 |
| 155 | 5.6.2 | Display thumbnail, food name, macros, and timestamp |  | 1d | 2026-07-17 | 2026-07-17 | 154 | 0d | Flutter Developer | 8h | 64 |
| 156 | 5.6.3 | Implement pull-to-refresh and lazy loading |  | 1d | 2026-07-20 | 2026-07-20 | 155 | 0d | Flutter Developer | 8h | 64 |
| 157 | 5.7 | **Weekly Streak Tracker** |  | 2d | 2026-07-21 | 2026-07-22 |  | 0d |  | 16h | 128 |
| 158 | 5.7.1 | Build 7-day streak view |  | 1d | 2026-07-21 | 2026-07-21 | 156 | 0d | Flutter Developer | 8h | 64 |
| 159 | 5.7.2 | Implement streak increment logic |  | 0.5d | 2026-07-22 | 2026-07-22 | 158 | 0d | Flutter Developer | 4h | 32 |
| 160 | 5.7.3 | Implement streak reset and push reminder notification |  | 0.5d | 2026-07-22 | 2026-07-22 | 159 | 0d | Flutter Developer | 4h | 32 |
| 161 | 5.8 | **Profile Management Screen** |  | 2d | 2026-07-23 | 2026-07-24 |  | 0d |  | 16h | 128 |
| 162 | 5.8.1 | Build profile screen displaying user stats |  | 1d | 2026-07-23 | 2026-07-23 | 160 | 0d | Flutter Developer | 8h | 64 |
| 163 | 5.8.2 | Implement edit functionality (update stats, re-calc TDEE) |  | 0.5d | 2026-07-24 | 2026-07-24 | 162 | 0d | Flutter Developer | 4h | 32 |
| 164 | 5.8.3 | Add logout button with Firebase Auth sign-out |  | 0.5d | 2026-07-24 | 2026-07-24 | 163 | 0d | Flutter Developer | 4h | 32 |
| 165 | 5.9 | **Cross-Cutting Concerns** |  | 2d | 2026-07-27 | 2026-07-28 |  | 0d |  | 16h | 128 |
| 166 | 5.9.1 | Implement input validation and error handling throughout app |  | 1d | 2026-07-27 | 2026-07-27 | 164 | 0d | Flutter Developer | 8h | 64 |
| 167 | 5.9.2 | Ensure responsiveness across screen sizes (5 to 6.5 inch) |  | 0.2d | 2026-07-28 | 2026-07-28 | 166 | 0d | Flutter Developer | 1.6h | 12.8 |
| 168 | 5.9.3 | Implement loading indicators and optimistic UI updates |  | 0.2d | 2026-07-28 | 2026-07-28 | 167 | 0d | Flutter Developer | 1.6h | 12.8 |
| 169 | 5.9.4 | Code review, cleanup, and merge all feature branches |  | 0.6d | 2026-07-28 | 2026-07-28 | 168 | 0d | Flutter Developer | 4.8h | 38.4 |
| 170 | 5.9.5 | Flutter App Feature Complete | milestone | 0d | 2026-07-28 | 2026-07-28 | 169 | 0d |  |  |  |

| ID | WBS | Task | Type | Duration | Start | Finish | Predecessors | Total slack | Resources | Work | Cost |
| --- | --- | --- | --- | --- | --- | --- | --- | --- | --- | --- | --- |
| 171 | 6 | **TESTING & QUALITY ASSURANCE PHASE** |  | 29d | 2026-08-24 | 2026-10-02 | 85 | 0d |  | 232h | 1,256 |
| 172 | 6.1 | **Unit Testing** |  | 5d | 2026-08-24 | 2026-08-31 |  | 0d |  | 40h | 224 |
| 173 | 6.1.1 | Write unit tests for TDEE/macro calculation logic |  | 1d | 2026-08-24 | 2026-08-24 |  | 0d | QA Engineer | 8h | 40 |
| 174 | 6.1.2 | Write unit tests for A-Star meal planner algorithm |  | 1d | 2026-08-26 | 2026-08-26 | 173 | 0d | QA Engineer | 8h | 40 |
| 175 | 6.1.3 | Write unit tests for streak logic |  | 1d | 2026-08-27 | 2026-08-27 | 174 | 0d | QA Engineer | 8h | 40 |
| 176 | 6.1.4 | Execute unit tests and log results |  | 1d | 2026-08-28 | 2026-08-28 | 175 | 0d | QA Engineer | 8h | 40 |
| 177 | 6.1.5 | Fix defects found during unit testing and re-test |  | 1d | 2026-08-31 | 2026-08-31 | 176 | 0d | Flutter Developer | 8h | 64 |
| 178 | 6.2 | **Integration Testing** |  | 7d | 2026-09-01 | 2026-09-09 |  | 0d |  | 56h | 352 |
| 179 | 6.2.1 | Test snap-to-log flow end-to-end |  | 2d | 2026-09-01 | 2026-09-02 | 177 | 0d | QA Engineer | 16h | 80 |
| 180 | 6.2.2 | Test meal planner refresh after each meal log |  | 1d | 2026-09-03 | 2026-09-03 | 179 | 0d | QA Engineer | 8h | 40 |
| 181 | 6.2.3 | Test onboarding to TDEE to dashboard flow |  | 1d | 2026-09-04 | 2026-09-04 | 180 | 0d | QA Engineer | 8h | 40 |
| 182 | 6.2.4 | Fix and re-test all integration defects |  | 3d | 2026-09-07 | 2026-09-09 | 181 | 0d | Flutter Developer | 24h | 192 |
| 183 | 6.3 | **System & Performance Testing** |  | 7d | 2026-09-10 | 2026-09-18 |  | 0d |  | 56h | 376 |
| 184 | 6.3.1 | Measure end-to-end latency on 5 Android devices |  | 1d | 2026-09-10 | 2026-09-10 | 182 | 0d | QA Engineer | 8h | 40 |
| 185 | 6.3.2 | Perform API load testing (50 concurrent users) |  | 1d | 2026-09-11 | 2026-09-11 | 184 | 0d | QA Engineer | 8h | 40 |
| 186 | 6.3.3 | Test TFLite classification accuracy on 500-sample batch |  | 1d | 2026-09-14 | 2026-09-14 | 185 | 0d | ML Engineer | 8h | 80 |
| 187 | 6.3.4 | Test Gemini fallback behavior |  | 1d | 2026-09-15 | 2026-09-15 | 186 | 0d | Backend Developer | 8h | 64 |
| 188 | 6.3.5 | Conduct security review |  | 2d | 2026-09-16 | 2026-09-17 | 187 | 0d | DevOps Engineer | 16h | 112 |
| 189 | 6.3.6 | Document performance benchmarks and QA sign-off |  | 1d | 2026-09-18 | 2026-09-18 | 188 | 0d | QA Engineer | 8h | 40 |
| 190 | 6.4 | **User Acceptance Testing (UAT)** |  | 10d | 2026-09-21 | 2026-10-02 |  | 0d |  | 80h | 304 |
| 191 | 6.4.1 | Recruit 20 beta users for 7-day UAT session |  | 2d | 2026-09-21 | 2026-09-22 | 189 | 0d | Project Manager | 16h |  |
| 192 | 6.4.2 | Distribute beta APK and prepare test scenarios |  | 1d | 2026-09-23 | 2026-09-23 | 191 | 0d | QA Engineer | 8h | 40 |
| 193 | 6.4.3 | Monitor usage, collect bug reports and ratings |  | 5d | 2026-09-24 | 2026-09-30 | 192 | 0d | QA Engineer | 40h | 200 |
| 194 | 6.4.4 | Fix all P1 (crash/data loss) bugs identified during UAT |  | 1d | 2026-10-01 | 2026-10-01 | 193 | 0d | Flutter Developer | 8h | 64 |
| 195 | 6.4.5 | Obtain UAT final sign-off |  | 1d | 2026-10-02 | 2026-10-02 | 194 | 0d | Project Manager | 8h |  |
| 196 | 6.4.6 | QA Sign-off Complete | milestone | 0d | 2026-10-02 | 2026-10-02 | 195 | 0d |  |  |  |

| ID | WBS | Task | Type | Duration | Start | Finish | Predecessors | Total slack | Free slack | Resources | Work | Cost |
| --- | --- | --- | --- | --- | --- | --- | --- | --- | --- | --- | --- | --- |
| 197 | 7 | **DEPLOYMENT PHASE** |  | 14d | 2026-07-29 | 2026-08-18 | 122 | 0d |  |  | 112h | 448 |
| 198 | 7.1 | **Infrastructure & Production Setup** |  | 3d | 2026-07-29 | 2026-07-31 |  |  |  |  | 24h | 152 |
| 199 | 7.1.1 | Configure production environment on Railway/Render |  | 0.5d | 2026-07-29 | 2026-07-29 |  | 51d | 0d | DevOps Engineer | 4h | 28 |
| 200 | 7.1.2 | Configure Firebase production security rules and backups |  | 1d | 2026-07-29 | 2026-07-30 | 199 | 51d | 0d | DevOps Engineer | 8h | 56 |
| 201 | 7.1.3 | Setup monitoring and alerting |  | 0.5d | 2026-07-30 | 2026-07-30 | 200 | 51d | 0d | DevOps Engineer | 4h | 28 |
| 202 | 7.1.4 | Perform smoke test on production backend |  | 1d | 2026-07-31 | 2026-07-31 | 201 | 51d | 0d | QA Engineer | 8h | 40 |
| 203 | 7.2 | **Google Play Store Deployment** |  | 5d | 2026-08-03 | 2026-08-07 |  | 51d |  |  | 40h | 120 |
| 204 | 7.2.1 | Build release APK/AAB with production Firebase config |  | 1d | 2026-08-03 | 2026-08-03 | 202 | 51d | 0d | Flutter Developer | 8h | 64 |
| 205 | 7.2.2 | Prepare Play Store listing (screenshots, description) |  | 1d | 2026-08-04 | 2026-08-04 | 204 | 51d | 0d | Project Manager | 8h |  |
| 206 | 7.2.3 | Submit app to Google Play internal testing track |  | 1d | 2026-08-05 | 2026-08-05 | 205 | 51d | 0d | DevOps Engineer | 8h | 56 |
| 207 | 7.2.4 | Address Play Store policy review feedback |  | 1d | 2026-08-06 | 2026-08-06 | 206 | 51d | 0d | Project Manager | 8h |  |
| 208 | 7.2.5 | Promote app to production and announce Go-Live |  | 1d | 2026-08-07 | 2026-08-07 | 207 | 51d | 0d | Project Manager | 8h |  |
| 209 | 7.3 | **Documentation** |  | 6d | 2026-08-10 | 2026-08-18 |  | 51d |  |  | 48h | 176 |
| 210 | 7.3.1 | Finalize Swagger/OpenAPI documentation |  | 1d | 2026-08-10 | 2026-08-10 | 208 | 51d | 0d | Backend Developer | 8h | 64 |
| 211 | 7.3.2 | Write user manual with screenshots and FAQs |  | 2d | 2026-08-11 | 2026-08-12 | 210 | 51d | 0d | Project Manager | 16h |  |
| 212 | 7.3.3 | Write maintenance guide |  | 2d | 2026-08-13 | 2026-08-17 | 211 | 51d | 0d | DevOps Engineer | 16h | 112 |
| 213 | 7.3.4 | Conduct documentation review and sign-off |  | 1d | 2026-08-18 | 2026-08-18 | 212 | 51d | 0d | Project Manager | 8h |  |
| 214 | 7.3.5 | App Deployed to Production | milestone | 0d | 2026-08-18 | 2026-08-18 | 213 | 51d |  |  |  |  |
| 215 | 8 | **PROJECT CLOSURE PHASE** |  | 19d | 2026-10-05 | 2026-10-29 | 171 | 0d |  |  | 152h | 688 |
| 216 | 8.1 | **Post-Launch Monitoring & Stabilization** |  | 13d | 2026-10-05 | 2026-10-21 |  | 0d |  |  | 104h | 632 |
| 217 | 8.1.1 | Monitor app performance and Gemini API costs |  | 7d | 2026-10-05 | 2026-10-13 |  | 0d |  | DevOps Engineer | 56h | 392 |
| 218 | 8.1.2 | Collect user feedback via in-app survey |  | 2d | 2026-10-14 | 2026-10-15 | 217 | 0d |  | Project Manager | 16h |  |
| 219 | 8.1.3 | Implement critical hotfixes if production issues arise |  | 2d | 2026-10-16 | 2026-10-19 | 218 | 0d |  | Flutter Developer | 16h | 128 |
| 220 | 8.1.4 | Track Firebase Analytics: onboarding completion and DAU |  | 2d | 2026-10-20 | 2026-10-21 | 219 | 0d |  | DevOps Engineer | 16h | 112 |

| ID | WBS | Task | Type | Duration | Start | Finish | Predecessors | Total slack | Resources | Work | Cost |
| --- | --- | --- | --- | --- | --- | --- | --- | --- | --- | --- | --- |
| 221 | 8.2 | **Project Review & Lessons Learned** |  | 6d | 2026-10-22 | 2026-10-29 |  | 0d |  | 48h | 56 |
| 222 | 8.2.1 | Conduct post-implementation review (PIR) vs SMART goals |  | 2d | 2026-10-22 | 2026-10-23 | 220 | 0d | Project Manager | 16h |  |
| 223 | 8.2.2 | Document lessons learned |  | 1d | 2026-10-26 | 2026-10-26 | 222 | 0d | PM | 8h |  |
| 224 | 8.2.3 | Archive project artifacts to Google Drive |  | 1d | 2026-10-27 | 2026-10-27 | 223 | 0d | DevOps Engineer | 8h | 56 |
| 225 | 8.2.4 | Obtain final project sign-off from all stakeholders |  | 1d | 2026-10-28 | 2026-10-28 | 224 | 0d | Project Manager | 8h |  |
| 226 | 8.2.5 | Handover to maintenance team and close project |  | 1d | 2026-10-29 | 2026-10-29 | 225 | 0d | Project Manager | 8h |  |
| 227 | 8.2.6 | Project Officially Closed | milestone | 0d | 2026-10-29 | 2026-10-29 | 226 | 0d |  |  |  |
